# integrador55

Schedule from MS Project, 2024-03-12 to 2024-11-26, costs in C$, A marks actual dates.

## Calendars

- Estándar: Mon-Fri 09:00-13:00, 15:00-19:00; Sat-Sun off. Exceptions (off unless hours are given): 2024-05-29 to 2024-05-31 (Fin de semana largo(Dias de las madres)), 2024-06-23 (Dia del Padre), 2024-06-27 09:00-13:00, 15:00-19:00, 2024-06-28 to 2024-08-12 (Vacaciones intesemestrales), 2024-09-10 to 2024-09-15 (Fiesta Patrias), 2024-11-02 (Dia de los muertos), 2024-11-22 (Fin de semestre), 2024-11-23 09:00-13:00, 15:00-19:00, 2024-11-24 (Fin de semestre), 2024-11-25 09:00-13:00, 15:00-19:00, 2024-11-26 to 2025-03-11 (Fin de semestre).

## Resources

| Resource | Rate | Cost per use |
| --- | --- | --- |
| Administrador de Base de Datos | 210 |  |
| Programador | 250 |  |
| Analista | 210 |  |
| Gerente de Proyectos | 220 |  |
| Alimentaciòn(Merienda) |  |  |
| Materiales de Uso | 14400 | 100800 |
| Computadotadora | 45000 |  |
| Calidad de software | 190 |  |
| Programador Movil | 40 |  |

## Schedule

| ID | WBS | Task | Type | Duration | Start | Finish | Predecessors | Complete | Actual start | Actual finish | Baseline 1 start | Baseline 1 finish | Constraint | Resources | Work | Actual work | Cost | Actual cost |
| --- | --- | --- | --- | --- | --- | --- | --- | --- | --- | --- | --- | --- | --- | --- | --- | --- | --- | --- |
| 1 | 1 | **Gestión de proyectos** |  | 26d | 2024-03-12 | 2024-04-16 |  | 100% | 2024-03-13 | 2024-08-09 |  |  |  |  | 1056h | 1056h | 282,500 | 279,500 |
| 2 | 1.1 | **Planificación** |  | 26d | 2024-05-03 | 2024-06-12 |  | 100% | 2024-03-13 | 2024-08-09 |  |  |  |  | 1056h | 1056h | 237,500 | 234,500 |
| 3 | 1.1.1 | Acta Constitutiva Del Proyecto |  | 4d | 2024-03-13 A | 2024-03-18 A |  | 100% |  |  | 2024-03-13 | 2024-03-18 | finish no earlier than 2024-03-18 | Gerente de Proyectos | 32h | 32h | 7,040 | 7,040 |
| 4 | 1.1.2 | Diseño del EDT |  | 5d | 2024-03-18 A | 2024-03-22 A | 3 | 100% |  |  | 2024-03-18 | 2024-03-22 | start no earlier than 2024-03-18 | Gerente de Proyectos | 40h | 40h | 8,800 | 8,800 |
| 5 | 1.1.3 | **Reuniones** |  | 15d | 2024-05-03 A | 2024-05-23 | 4 | 100% |  | 2024-08-09 | 2024-05-03 | 2024-05-23 |  | Administrador de Base de Datos; Alimentaciòn(Merienda) [0.1%]; Analista; Gerente de Proyectos; Programador | 984h | 984h | 221,660 | 218,660 |
| 6 | 1.1.3.1 | Reuniones 1 | manual | 1d | 2024-05-03 A | 2024-05-03 A |  | 100% |  |  |  |  | start no earlier than 2024-05-03 | Administrador de Base de Datos; Alimentaciòn(Merienda) [0.1%]; Analista; Gerente de Proyectos; Programador | 32h | 32h | 7,320 | 7,120 |
| 7 | 1.1.3.2 | Reuniones 2 | manual | 1d | 2024-05-10 A | 2024-05-10 A |  | 100% |  |  |  |  | start no earlier than 2024-05-10 | Administrador de Base de Datos; Alimentaciòn(Merienda) [0.1%]; Analista; Gerente de Proyectos; Programador | 32h | 32h | 7,320 | 7,120 |
| 8 | 1.1.3.3 | Reuniones 3 | manual | 1d | 2024-05-17 A | 2024-05-17 A |  | 100% |  |  |  |  | start no earlier than 2024-05-17 | Administrador de Base de Datos; Alimentaciòn(Merienda) [0.1%]; Analista; Gerente de Proyectos; Programador | 32h | 32h | 7,320 | 7,120 |
| 9 | 1.1.3.4 | Reuniones 4 | manual | 1d | 2024-05-24 A | 2024-05-24 A |  | 100% |  |  |  |  | start no earlier than 2024-05-24 | Administrador de Base de Datos; Alimentaciòn(Merienda) [0.1%]; Analista; Gerente de Proyectos; Programador | 32h | 32h | 7,320 | 7,120 |
| 10 | 1.1.3.5 | Reuniones 5 | manual | 1d | 2024-05-31 A | 2024-05-31 A |  | 100% |  |  |  |  | start no earlier than 2024-05-31 | Administrador de Base de Datos; Alimentaciòn(Merienda) [0.1%]; Analista; Gerente de Proyectos; Programador | 32h | 32h | 7,320 | 7,120 |
| 11 | 1.1.3.6 | Reuniones 6 | manual | 1d | 2024-06-07 A | 2024-06-07 A |  | 100% |  |  |  |  | start no earlier than 2024-06-07 | Administrador de Base de Datos; Alimentaciòn(Merienda) [0.1%]; Analista; Gerente de Proyectos; Programador | 32h | 32h | 7,320 | 7,120 |
| 12 | 1.1.3.7 | Reuniones 7 | manual | 1d | 2024-06-14 A | 2024-06-14 A |  | 100% |  |  |  |  | start no earlier than 2024-06-14 | Administrador de Base de Datos; Alimentaciòn(Merienda) [0.1%]; Analista; Gerente de Proyectos; Programador | 32h | 32h | 7,320 | 7,120 |
| 13 | 1.1.3.8 | Reuniones 8 | manual | 1d | 2024-06-21 A | 2024-06-21 A |  | 100% |  |  |  |  | start no earlier than 2024-06-21 | Administrador de Base de Datos; Alimentaciòn(Merienda) [0.1%]; Analista; Gerente de Proyectos; Programador; Calidad de software | 40h | 40h | 8,840 | 8,640 |
| 14 | 1.1.3.9 | Reuniones 9 | manual | 1d | 2024-06-28 A | 2024-06-28 A |  | 100% |  |  |  |  | start no earlier than 2024-06-28 | Administrador de Base de Datos; Alimentaciòn(Merienda) [0.1%]; Analista; Gerente de Proyectos; Programador | 32h | 32h | 7,320 | 7,120 |
| 15 | 1.1.3.10 | Reuniones 10 | manual | 1d | 2024-07-05 A | 2024-07-05 A |  | 100% |  |  |  |  | start no earlier than 2024-07-05 | Administrador de Base de Datos; Alimentaciòn(Merienda) [0.1%]; Analista; Gerente de Proyectos; Programador | 32h | 32h | 7,320 | 7,120 |
| 16 | 1.1.3.11 | Reuniones 11 | manual | 1d | 2024-07-12 A | 2024-07-12 A |  | 100% |  |  |  |  | start no earlier than 2024-07-12 | Administrador de Base de Datos; Alimentaciòn(Merienda) [0.1%]; Analista; Gerente de Proyectos; Programador | 32h | 32h | 7,320 | 7,120 |
| 17 | 1.1.3.12 | Reuniones 12 | manual | 1d | 2024-07-19 A | 2024-07-19 A |  | 100% |  |  |  |  | start no earlier than 2024-07-19 | Administrador de Base de Datos; Alimentaciòn(Merienda) [0.1%]; Analista; Gerente de Proyectos; Programador | 32h | 32h | 7,320 | 7,120 |
| 18 | 1.1.3.13 | Reuniones 13 | manual | 1d | 2024-07-26 A | 2024-07-26 A |  | 100% |  |  |  |  | start no earlier than 2024-07-26 | Administrador de Base de Datos; Alimentaciòn(Merienda) [0.1%]; Analista; Gerente de Proyectos; Programador | 32h | 32h | 7,320 | 7,120 |
| 19 | 1.1.3.14 | Reuniones 14 | manual | 1d | 2024-08-02 A | 2024-08-02 A |  | 100% |  |  |  |  | start no earlier than 2024-08-02 | Administrador de Base de Datos; Alimentaciòn(Merienda) [0.1%]; Analista; Gerente de Proyectos; Programador; Calidad de software | 40h | 40h | 8,840 | 8,640 |
| 20 | 1.1.3.15 | Reuniones 15 | manual | 1d | 2024-08-09 A | 2024-08-09 A |  | 100% |  |  |  |  | start no earlier than 2024-08-09 | Administrador de Base de Datos; Alimentaciòn(Merienda) [0.1%]; Analista; Gerente de Proyectos; Programador; Calidad de software | 40h | 40h | 8,840 | 8,640 |
| 21 | 2 | **Charter** |  | 13d | 2024-06-13 | 2024-08-14 | 1 | 100% | 2024-03-20 | 2024-06-21 |  |  |  |  | 1176h | 1176h | 260,720 | 260,720 |
| 22 | 2.1 | Definición de los interesados |  | 7d | 2024-03-20 A | 2024-03-28 A | 4 | 100% |  |  | 2024-03-20 | 2024-03-28 | start no earlier than 2024-03-20 | Gerente de Proyectos; Calidad de software | 112h | 112h | 22,960 | 22,960 |
| 23 | 2.2 | Matriz de roles |  | 6d | 2024-03-29 A | 2024-04-05 A | 22SS | 100% |  |  | 2024-03-29 | 2024-04-05 | start no earlier than 2024-03-23 | Gerente de Proyectos; Calidad de software | 96h | 96h | 19,680 | 19,680 |
| 24 | 2.3 | Fin de gestión | milestone | 0d | 2024-04-05 A | 2024-04-05 A | 23 | 100% |  |  | 2024-04-05 | 2024-04-05 | start no earlier than 2024-04-05 |  |  |  |  |  |

| ID | WBS | Task | Type | Duration | Start | Finish | Predecessors | Complete | Actual start | Actual finish | Baseline 1 start | Baseline 1 finish | Constraint | Resources | Work | Actual work | Cost | Actual cost |
| --- | --- | --- | --- | --- | --- | --- | --- | --- | --- | --- | --- | --- | --- | --- | --- | --- | --- | --- |
| 25 | 2.4 | **Diseño** |  | 21d | 2024-04-08 | 2024-05-06 | 24 | 100% | 2024-04-16 | 2024-05-14 |  |  |  |  | 280h | 280h | 58,240 | 58,240 |
| 26 | 2.4.1 | **Documentación** |  | 21d | 2024-04-16 A | 2024-05-14 A |  | 100% |  |  |  |  |  |  | 280h | 280h | 58,240 | 58,240 |
| 27 | 2.4.1.1 | Diagrama General |  | 8d | 2024-04-16 A | 2024-04-25 A | 24 | 100% |  |  | 2024-04-16 | 2024-04-25 | start no earlier than 2024-04-16 | Gerente de Proyectos; Calidad de software | 128h | 128h | 26,240 | 26,240 |
| 28 | 2.4.1.2 | Diagramas de Caso de uso |  | 6d | 2024-04-26 A | 2024-05-03 A | 27 | 100% |  |  | 2024-04-26 | 2024-05-03 |  | Gerente de Proyectos; Calidad de software | 96h | 96h | 19,680 | 19,680 |
| 29 | 2.4.1.3 | Mockups |  | 7d | 2024-05-06 A | 2024-05-14 A | 28 | 100% |  |  | 2024-05-06 | 2024-05-14 | finish no earlier than 2024-05-13 | Gerente de Proyectos | 56h | 56h | 12,320 | 12,320 |
| 30 | 2.4.1.4 | Fin de diseño | milestone | 0d | 2024-05-14 A | 2024-05-14 A | 29 | 100% |  |  | 2024-05-14 | 2024-05-14 |  |  |  |  |  |  |
| 31 | 2.5 | **Implementación** |  | 14d | 2024-05-15 | 2024-06-06 | 25 | 100% | 2024-04-11 | 2024-06-21 |  |  |  |  | 688h | 688h | 159,840 | 159,840 |
| 32 | 2.5.1 | **Base de Datos** |  | 14d | 2024-05-15 A | 2024-06-06 A |  | 100% |  |  |  |  |  |  | 112h | 112h | 23,520 | 23,520 |
| 33 | 2.5.1.1 | Desnormalizacion |  | 7d | 2024-05-15 A | 2024-05-23 A | 30 | 100% |  |  | 2024-05-15 | 2024-05-23 |  | Administrador de Base de Datos | 56h | 56h | 11,760 | 11,760 |
| 34 | 2.5.1.2 | Modelo Estrella |  | 7d | 2024-05-24 A | 2024-06-06 A | 33 | 100% |  |  | 2024-05-24 | 2024-06-06 |  | Administrador de Base de Datos | 56h | 56h | 11,760 | 11,760 |
| 35 | 2.5.2 | **Analisis de Datos** |  | 24d | 2024-05-16 A | 2024-06-21 A |  | 100% |  |  |  |  |  |  | 192h | 192h | 40,320 | 40,320 |
| 36 | 2.5.2.1 | Datawarehouse |  | 7d | 2024-05-16 A | 2024-05-24 A | 34 | 100% |  |  | 2024-05-16 | 2024-05-24 |  | Analista | 56h | 56h | 11,760 | 11,760 |
| 37 | 2.5.2.2 | Implemetar el EDA |  | 6d | 2024-05-27 A | 2024-06-06 A | 36 | 100% |  |  | 2024-05-27 | 2024-06-06 |  | Analista | 48h | 48h | 10,080 | 10,080 |
| 38 | 2.5.2.3 | Realizar Gráficos de Visualización |  | 5d | 2024-06-07 A | 2024-06-13 A | 37SS | 100% |  |  | 2024-06-07 | 2024-06-13 |  | Analista | 40h | 40h | 8,400 | 8,400 |
| 39 | 2.5.2.4 | Pruebas Unitarias |  | 6d | 2024-06-14 A | 2024-06-21 A | 38 | 100% |  |  | 2024-06-14 | 2024-06-21 |  | Analista | 48h | 48h | 10,080 | 10,080 |
| 40 | 2.5.3 | **Desarrollo de Software** |  | 48d | 2024-04-11 A | 2024-06-20 A | 35 | 100% |  |  |  |  |  |  | 384h | 384h | 96,000 | 96,000 |
| 41 | 2.5.3.1 | FrontEnd |  | 24d | 2024-04-11 A | 2024-05-14 A | 39 | 100% |  |  | 2024-04-11 | 2024-05-14 |  | Programador | 192h | 192h | 48,000 | 48,000 |
| 42 | 2.5.3.2 | BackEnd |  | 24d | 2024-05-15 A | 2024-06-20 A | 41SS | 100% |  |  | 2024-05-15 | 2024-06-20 |  | Programador | 192h | 192h | 48,000 | 48,000 |
| 43 | 2.5.3.3 | Fin de la implmentación | milestone | 0d | 2024-06-20 A | 2024-06-20 A | 42 | 100% |  |  | 2024-06-20 | 2024-06-20 |  |  |  |  |  |  |
| 44 | 3 | **Verificación** |  | 26d | 2024-04-29 A | 2024-06-06 A |  | 100% |  |  |  |  |  |  | 832h | 832h | 185,120 | 185,120 |
| 45 | 3.1 | **Software Insatalado** |  | 26d | 2024-04-29 A | 2024-06-06 A |  | 100% |  |  |  |  |  |  | 832h | 832h | 185,120 | 185,120 |
| 46 | 3.1.1 | Integración del Sistema |  | 13d | 2024-04-29 A | 2024-05-15 A | 43 | 100% |  |  | 2024-04-29 | 2024-05-15 |  | Administrador de Base de Datos; Analista; Gerente de Proyectos; Programador | 416h | 416h | 92,560 | 92,560 |
| 47 | 3.1.2 | Pruebas de Sistema |  | 13d | 2024-05-16 A | 2024-06-06 A | 46 | 100% |  |  | 2024-05-16 | 2024-06-06 |  | Administrador de Base de Datos; Analista; Gerente de Proyectos; Programador | 416h | 416h | 92,560 | 92,560 |
| 48 | 3.1.3 | Fin de Verificación | milestone | 0d | 2024-06-06 A | 2024-06-06 A | 47 | 100% |  |  | 2024-06-06 | 2024-06-06 |  |  |  |  |  |  |

| ID | WBS | Task | Type | Duration | Start | Finish | Predecessors | Complete | Remaining | Baseline 1 start | Baseline 1 finish | Total slack | Free slack | Resources | Work | Actual work | Cost | Actual cost |
| --- | --- | --- | --- | --- | --- | --- | --- | --- | --- | --- | --- | --- | --- | --- | --- | --- | --- | --- |
| 49 | 4 | **Mantenimiento** |  | 21d | 2024-06-07 A | 2024-08-20 A | 44 | 100% |  |  |  |  |  |  | 336h | 336h | 78,960 | 78,960 |
| 50 | 4.1 | **Correción de errores** |  | 21d | 2024-06-07 A | 2024-08-20 A |  | 100% |  |  |  |  |  |  | 336h | 336h | 78,960 | 78,960 |
| 51 | 4.1.1 | Corregir Errores del sistema |  | 10d | 2024-06-07 A | 2024-06-20 A | 48 | 100% |  | 2024-06-07 | 2024-06-20 |  |  | Gerente de Proyectos; Programador | 160h | 160h | 37,600 | 37,600 |
| 52 | 4.1.2 | Implemetacion de mejoras |  | 11d | 2024-06-21 A | 2024-08-20 A | 51 | 100% |  | 2024-06-21 | 2024-08-20 |  |  | Gerente de Proyectos; Programador | 176h | 176h | 41,360 | 41,360 |
| 53 | 4.1.3 | Fin de Mantenimiento | milestone | 0d | 2024-08-20 A | 2024-08-20 A | 52 | 100% |  | 2024-08-20 | 2024-08-20 |  |  |  |  |  |  |  |
| 54 | 5 | **Planificación de proyectos** |  | 15d | 2024-08-12 A | 2024-08-30 |  | 88% | 1.75d |  |  |  |  |  | 120h | 106h | 21,120 | 18,040 |
| 55 | 5.1 | Control Integrado de Cambios |  | 3d | 2024-08-13 A | 2024-08-15 A | 52 | 100% |  |  |  |  |  | Gerente de Proyectos | 24h | 24h |  |  |
| 56 | 5.2 | Actualización del alcance (WBS) y cronograma |  | 3d | 2024-08-16 A | 2024-08-20 A | 55 | 100% |  |  |  |  |  | Gerente de Proyectos | 24h | 24h | 5,280 | 5,280 |
| 57 | 5.3 | Realizar actualización en las estimaciones de duración |  | 3d | 2024-08-21 A | 2024-08-23 | 56SS | 75% | 0.75d |  |  | 5d | 3d | Gerente de Proyectos | 24h | 18h | 5,280 | 3,960 |
| 58 | 5.4 | Realizar actualización de los costos |  | 2d | 2024-08-26 A | 2024-08-27 | 57SS | 75% | 0.5d |  |  | 3d | 2d | Gerente de Proyectos | 16h | 12h | 3,520 | 2,640 |
| 59 | 5.5 | Realizar actualización de riesgos |  | 2d | 2024-08-28 A | 2024-08-29 | 58SS | 75% | 0.5d |  |  | 1d |  | Gerente de Proyectos | 16h | 12h | 3,520 | 2,640 |
| 60 | 5.6 | Matriz de registro de lecciones aprendidas |  | 2d | 2024-08-30 A | 2024-09-02 A | 59 | 100% |  |  |  |  |  | Gerente de Proyectos | 16h | 16h | 3,520 | 3,520 |
| 61 | 5.7 | Fin de Planificación | milestone | 0d | 2024-08-12 | 2024-08-12 |  |  |  |  |  | 14d |  |  |  |  |  |  |
| 62 | 6 | **Programación Movil** |  | 17d | 2024-08-30 A | 2024-09-30 | 54 | 85% | 2.5d |  |  | 0d |  |  | 136h | 116h | 4,800 | 4,000 |
| 63 | 6.1 | Configuración del proyecto en Android studio |  | 2d | 2024-09-02 A | 2024-09-03 A |  | 100% |  |  |  |  |  | Programador Movil | 16h | 16h |  |  |
| 64 | 6.2 | Diseña los waireframe de la aplicación móviles. |  | 5d | 2024-09-04 A | 2024-09-16 A | 63 | 100% |  |  |  |  |  | Programador Movil | 40h | 40h | 1,600 | 1,600 |
| 65 | 6.3 | Implementa componentes de interfaz de usuarios |  | 4d | 2024-09-17 A | 2024-09-20 | 64 | 75% | 1d |  |  | 6d | 4d | Programador Movil | 32h | 24h | 1,280 | 960 |
| 66 | 6.4 | Creación de los principales layout |  | 3d | 2024-09-23 A | 2024-09-25 | 65SS | 75% | 0.75d |  |  | 2.25d | 0d | Programador Movil | 24h | 18h | 960 | 720 |
| 67 | 6.5 | Visualización de los datos a través de los listview y/o recycleview |  | 3d | 2024-09-26 A | 2024-09-30 | 66 | 75% | 0.75d |  |  | 0d |  | Programador Movil | 24h | 18h | 960 | 720 |
| 68 | 6.6 | Fin de Movil | milestone | 0d | 2024-08-30 | 2024-08-30 |  |  |  |  |  | 17d |  |  |  |  |  |  |
| 69 | 7 | **Programación en la nube** |  | 26d | 2024-09-30 A | 2024-11-05 | 62 | 84% | 4.25d |  |  | 0d |  |  | 208h | 174h | 52,000 | 43,500 |
| 70 | 7.1 | Caracterizar el modelo de servicio más adecuado para la implementación de su proyecto |  | 4d | 2024-10-01 A | 2024-10-04 | 68 | 75% | 1d |  |  | 22d |  | Programador | 32h | 24h | 8,000 | 6,000 |
| 71 | 7.2 | Configuración del servidor en la nube |  | 3d | 2024-10-07 A | 2024-10-09 A | 70 | 100% |  |  |  |  |  | Programador | 24h | 24h | 6,000 | 6,000 |
| 72 | 7.3 | Creación de la base de datos NoSql en la nube (CosmoDB para mongodb) |  | 2d | 2024-10-10 A | 2024-10-11 | 71 | 50% | 1d |  |  | 3d | 0d | Programador | 16h | 8h | 4,000 | 2,000 |
| 73 | 7.4 | Manipulación de base de datos relacional en la nube |  | 4d | 2024-10-14 A | 2024-10-17 | 72 | 75% | 1d |  |  | 13d |  | Programador | 32h | 24h | 8,000 | 6,000 |
| 74 | 7.5 | Identificar que servicios se requieren para llevar a cabo el proyecto. |  | 4d | 2024-10-18 A | 2024-10-23 A | 73 | 100% |  |  |  |  |  | Programador | 32h | 32h | 8,000 | 8,000 |
| 75 | 7.6 | Configuraciones para el control de código fuente |  | 5d | 2024-10-24 A | 2024-10-30 | 74 | 75% | 1.25d |  |  | 4d |  | Programador | 40h | 30h | 10,000 | 7,500 |
| 76 | 7.7 | Migración y Despliegue en la Nube del sistema desarrollado en el semestre V |  | 4d | 2024-10-31 A | 2024-11-05 A | 75 | 100% |  |  |  |  |  | Programador | 32h | 32h | 8,000 | 8,000 |
| 77 | 7.8 | Fin de Programacion en la nube | milestone | 0d | 2024-09-30 | 2024-09-30 |  |  |  |  |  | 26d |  |  |  |  |  |  |

| ID | WBS | Task | Type | Duration | Start | Finish | Predecessors | Complete | Remaining | Total slack | Free slack | Constraint | Resources | Work | Actual work | Cost | Actual cost |
| --- | --- | --- | --- | --- | --- | --- | --- | --- | --- | --- | --- | --- | --- | --- | --- | --- | --- |
| 78 | 8 | **Base de datos no relacional** |  | 17d | 2024-11-04 A | 2024-11-26 |  | 90% | 1.75d |  |  |  |  | 136h | 122h | 23,520 | 20,580 |
| 79 | 8.1 | Escenarios de la base de dato no relacional del basados en el proyecto |  | 3d | 2024-11-04 A | 2024-11-06 A | 77 | 100% |  |  |  |  | Administrador de Base de Datos | 24h | 24h |  |  |
| 80 | 8.2 | Identificar los tipos de datos de la base de dato NoSql de su proyecto. |  | 3d | 2024-11-07 A | 2024-11-11 | 79 | 75% | 0.75d | 10d |  |  | Administrador de Base de Datos | 24h | 18h | 5,040 | 3,780 |
| 81 | 8.3 | Identificar el tipo de schema de la estructura de los documentos |  | 4d | 2024-11-12 A | 2024-11-15 A | 80 | 100% |  |  |  |  | Administrador de Base de Datos | 32h | 32h | 6,720 | 6,720 |
| 82 | 8.4 | Realizar esquema de la base datos no relacional |  | 3d | 2024-11-11 A | 2024-11-13 A | 81 | 100% |  |  |  | start no earlier than 2024-11-11 | Administrador de Base de Datos | 24h | 24h | 5,040 | 5,040 |
| 83 | 8.5 | Diseño de la base de datos documental localmente |  | 4d | 2024-11-19 A | 2024-11-23 | 82 | 75% | 1d | 1d |  | finish no earlier than 2024-11-23 | Administrador de Base de Datos | 32h | 24h | 6,720 | 5,040 |
| 84 | 8.6 | Fin de Base de Datos no relacional | milestone | 0d | 2024-11-04 | 2024-11-04 |  |  |  | 22d |  |  |  |  |  |  |  |
| 85 | 9 | **Analitica de Datos** |  | 14d | 2024-11-05 A | 2024-11-25 | 69 | 99% | 0d | 0d |  |  |  | 192h | 192h | 33,600 | 33,600 |
| 86 | 9.1 | Creación de las Dimensiones y tablas de hechos (Server Analysis Services) |  | 4d | 2024-11-06 A | 2024-11-11 A |  | 100% |  |  |  |  | Analista; Administrador de Base de Datos | 32h | 32h |  |  |
| 87 | 9.2 | Realizar operaciones con cubos |  | 3d | 2024-11-12 A | 2024-11-14 A | 86 | 100% |  |  |  |  | Analista; Administrador de Base de Datos | 48h | 48h | 10,080 | 10,080 |
| 88 | 9.3 | Identificar las interrogantes que se deben responder con el modelo |  | 4d | 2024-11-15 A | 2024-11-20 A | 87SS | 100% |  |  |  |  | Analista; Administrador de Base de Datos | 64h | 64h | 13,440 | 13,440 |
| 89 | 9.4 | Modelo multidimensional construido |  | 3d | 2024-11-21 A | 2024-11-25 A | 88 | 100% |  |  |  | finish no earlier than 2024-11-25 | Analista; Administrador de Base de Datos | 48h | 48h | 10,080 | 10,080 |
| 90 | 9.5 | Fin de Analitica | milestone | 0d | 2024-11-05 | 2024-11-05 |  |  |  | 20d |  |  |  |  |  |  |  |
| 91 | 10 | GAP |  | 7d | 2024-11-06 | 2024-11-14 |  |  |  | 13d | 0d | start no earlier than 2024-11-06 |  |  |  |  |  |
| 92 | 11 | Fin Proyecto | milestone | 0d | 2024-11-14 | 2024-11-14 | 91 |  |  | 13d |  |  |  |  |  |  |  |
